# PFA-Nethack

Schedule from Planner, 2012-11-30 to 2013-03-04.

## Calendars

- Défaut: Mon-Sun 08:00-12:00, 13:00-17:00.

## Resources

| Resource |
| --- |
| Ludovic Hofer |
| Benoit Ruelle |
| David Bitonneau |
| Louis Leclec'h |
| Qiwen Lu |
| Sven Taton |
| Arthur Havlicek |

## Schedule

| ID | WBS | Task | Start | Finish | Predecessors | Constraint | Resources | Work |
| --- | --- | --- | --- | --- | --- | --- | --- | --- |
| 1 | 1 | **Fin du prototypage** | 2012-11-30 | 2012-12-20 |  |  |  | 336h |
| 2 | 1.1 | Finition interface externe | 2012-11-30 | 2012-12-13 |  |  | Benoit Ruelle | 112h |
| 3 | 1.2 | Test de recette | 2012-12-14 | 2012-12-20 | 4, 2 |  | Ludovic Hofer [90%]; Benoit Ruelle; Louis Leclec'h [10%] | 112h |
| 4 | 1.3 | Finalisation des modifications noyaux | 2012-11-30 | 2012-12-13 |  |  | David Bitonneau | 112h |
| 5 | 2 | **Accords sur interfaces** | 2012-11-30 | 2012-12-06 |  |  |  | 280h |
| 6 | 2.1 | bot_handler | 2012-11-30 | 2012-12-06 |  |  | Ludovic Hofer [50%]; Arthur Havlicek [50%] | 56h |
| 7 | 2.2 | middle_man | 2012-11-30 | 2012-12-06 |  |  | Ludovic Hofer [50%]; Arthur Havlicek [50%] | 56h |
| 8 | 2.3 | game_statistics | 2012-11-30 | 2012-12-06 |  |  | Louis Leclec'h [50%]; Sven Taton [50%] | 56h |
| 9 | 2.4 | db_manager | 2012-11-30 | 2012-12-06 |  |  | Louis Leclec'h [50%]; Qiwen Lu [50%] | 56h |
| 10 | 2.5 | statistic_tool | 2012-11-30 | 2012-12-06 |  |  | Qiwen Lu [50%]; Sven Taton [50%] | 56h |
| 11 | 3 | **Développement des modules** | 2012-12-07 | 2013-01-11 |  |  |  | 1216h |
| 12 | 3.1 | **middle_man** | 2012-12-07 | 2013-01-11 | 8, 7, 6 |  |  | 280h |
| 13 | 3.1.1 | partie 1 | 2012-12-07 | 2012-12-13 |  |  | Arthur Havlicek [90%] | 48h |
| 14 | 3.1.2 | partie 2 | 2012-12-14 | 2013-01-11 | 13 | start no earlier than 2012-12-14 | David Bitonneau [10%]; Arthur Havlicek [90%] | 232h |
| 15 | 3.2 | **game_statistics** | 2012-12-07 | 2013-01-09 | 9, 8 |  |  | 224h |
| 16 | 3.2.1 | partie 1 | 2012-12-07 | 2012-12-13 |  |  | Ludovic Hofer [90%]; Louis Leclec'h [10%] | 56h |
| 17 | 3.2.2 | partie 2 | 2012-12-21 | 2013-01-09 | 16 | start no earlier than 2012-12-21 | Ludovic Hofer [90%]; Benoit Ruelle [10%]; Louis Leclec'h [10%] | 168h |
| 18 | 3.3 | bot_handler | 2012-12-14 | 2013-01-03 | 7, 6 | start no earlier than 2012-12-14 | Ludovic Hofer [10%]; David Bitonneau [90%] | 168h |
| 19 | 3.4 | db_manager | 2012-12-07 | 2013-01-03 | 9 |  | Louis Leclec'h [90%]; Qiwen Lu [10%] | 224h |
| 20 | 3.5 | statistic_tool | 2012-12-07 | 2013-01-03 | 10, 9 |  | Qiwen Lu [90%]; Sven Taton [10%] | 224h |
| 21 | 3.6 | game_launcher | 2012-12-21 | 2013-01-03 | 10 | start no earlier than 2012-12-21 | Benoit Ruelle [90%] | 96h |
| 22 | 4 | **Tests de recette** | 2013-01-04 | 2013-02-02 |  |  |  | 1400h |
| 23 | 4.1 | bot_handler <-> bot | 2013-01-04 | 2013-01-15 | 18 |  | Ludovic Hofer [10%]; Benoit Ruelle [90%]; David Bitonneau [90%] | 168h |
| 24 | 4.2 | middle_man <-> bot_handler | 2013-01-15 | 2013-01-26 | 12 | start no earlier than 2013-01-15 | Benoit Ruelle [50%]; David Bitonneau [25%]; Louis Leclec'h [25%]; Qiwen Lu [25%]; Sven Taton [25%]; Arthur Havlicek [25%] | 168h |
| 25 | 4.3 | middle_man <-> game_statistics | 2013-01-15 | 2013-01-26 | 15, 12 | start no earlier than 2013-01-15 | Ludovic Hofer [50%]; David Bitonneau [25%]; Qiwen Lu [25%]; Sven Taton [50%]; Arthur Havlicek [25%] | 168h |
| 26 | 4.4 | core <-> middle_man | 2013-01-15 | 2013-01-26 | 12 | start no earlier than 2013-01-15 | Benoit Ruelle [50%]; David Bitonneau [50%]; Sven Taton [25%]; Arthur Havlicek [50%] | 168h |
| 27 | 4.5 | game_statistics <-> db_manager | 2013-01-15 | 2013-01-26 | 19, 15 | start no earlier than 2013-01-15 | Ludovic Hofer [50%]; Louis Leclec'h [75%]; Qiwen Lu [50%] | 168h |
| 28 | 4.6 | db_manager <-> statistic_tool | 2013-01-04 | 2013-01-14 | 20, 19 |  | Louis Leclec'h [90%]; Qiwen Lu; Sven Taton [10%] | 168h |
| 29 | 4.7 | général | 2013-01-27 | 2013-02-02 | 28, 27, 26, 25, 24, 23, 21 |  | Ludovic Hofer; Benoit Ruelle; David Bitonneau; Louis Leclec'h; Qiwen Lu; Sven Taton; Arthur Havlicek | 392h |

| ID | WBS | Task | Start | Finish | Predecessors | Constraint | Resources | Work |
| --- | --- | --- | --- | --- | --- | --- | --- | --- |
| 30 | 5 | **Développement des bots** | 2012-12-28 | 2013-02-18 |  |  |  | 1008h |
| 31 | 5.1 | starter_package python | 2012-12-28 | 2013-01-10 |  | start no earlier than 2012-12-28 | Sven Taton [90%]; Arthur Havlicek [10%] | 112h |
| 32 | 5.2 | bots python | 2013-02-03 | 2013-02-18 | 29, 40, 31 |  | Benoit Ruelle; David Bitonneau; Qiwen Lu; Arthur Havlicek [50%] | 448h |
| 33 | 5.3 | bots javas | 2013-02-03 | 2013-02-18 | 29, 40 |  | Ludovic Hofer; Louis Leclec'h; Sven Taton; Arthur Havlicek [50%] | 448h |
| 34 | 6 | Production de statistiques | 2013-02-19 | 2013-02-23 | 30 |  | Qiwen Lu | 40h |
| 35 | 7 | Analyse des statistiques | 2013-02-24 | 2013-02-28 | 34 |  | Ludovic Hofer; Qiwen Lu | 80h |
| 36 | 8 | **Rédaction/finalisation du rapport** | 2013-02-19 | 2013-03-04 |  |  |  | 664h |
| 37 | 8.1 | Rédaction/finalisation générale part 1 | 2013-02-19 | 2013-02-23 | 30 |  | Ludovic Hofer; Benoit Ruelle; David Bitonneau; Louis Leclec'h; Sven Taton; Arthur Havlicek | 240h |
| 38 | 8.2 | Rédaction/finalisation générale part 2 | 2013-02-24 | 2013-03-04 | 37 |  | Benoit Ruelle; David Bitonneau; Louis Leclec'h; Sven Taton; Arthur Havlicek | 360h |
| 39 | 8.3 | Rédaction statistiques | 2013-03-01 | 2013-03-04 | 35 |  | Ludovic Hofer; Qiwen Lu | 64h |
| 40 | 9 | Recherche théorique | 2012-12-07 | 2012-12-27 |  | start no earlier than 2012-12-07 | Sven Taton [90%]; Arthur Havlicek [10%] | 168h |
